# Discovery Tool Software Development

Schedule from MS Project, 2018-09-03 to 2018-12-04.

## Calendars

- Standard: Mon-Fri 08:00-12:00, 13:00-17:00; Sat-Sun off. Exceptions (off unless hours are given): 2018-09-29 08:00-12:00, 13:00-17:00.
- Team_3_Discovery_Tool_Calendar: Mon-Fri 08:00-12:00, 13:00-17:00; Sat-Sun off. Exceptions (off unless hours are given): 2018-09-08 to 2018-12-02 08:00-12:00, 13:00-17:00 (Working Weekends).

## Resources

| Resource |
| --- |
| Project Manager |
| Software Architect |
| Prototyper |
| System Architect |
| Tester |
| Requirement Engineer |
| II V&V |
| Life Cycle Planner |
| Quality Engineer |
| Feasibility Analyst |
| Operational Concept Engineer |

## Schedule

| ID | WBS | Task | Type | Duration | Start | Finish | Predecessors | Total slack | Free slack | Constraint | Deadline | Calendar | Resources | Work |
| --- | --- | --- | --- | --- | --- | --- | --- | --- | --- | --- | --- | --- | --- | --- |
| 1 | 1 | **Exploration Phase I** |  | 21d | 2018-09-03 | 2018-09-23 |  |  |  |  |  | Team_3_Discovery_Tool_Calendar |  | 680h |
| 2 | 1.1 | Populate the WinBook |  | 10d | 2018-09-10 | 2018-09-19 |  | 76d |  | start no earlier than 2018-09-10 |  | Team_3_Discovery_Tool_Calendar | Operational Concept Engineer; Project Manager | 160h |
| 3 | 1.2 | Win-win session #1: Discuss and clarify client's needs |  | 2d | 2018-09-17 | 2018-09-18 |  | 0d |  | must finish on 2018-09-18 |  | Team_3_Discovery_Tool_Calendar | Feasibility Analyst; II V&V; Life Cycle Planner; Operational Concept Engineer; Project Manager; Prototyper; Quality Engineer; Requirement Engineer; Software Architect; System Architect; Tester | 176h |
| 4 | 1.3 | Conduct risk analysis and develop risk mitigation plan |  | 3d | 2018-09-21 | 2018-09-23 | 3 | 72d |  | finish no earlier than 2018-09-23 |  | Team_3_Discovery_Tool_Calendar | Feasibility Analyst; Life Cycle Planner; Operational Concept Engineer; Project Manager; Requirement Engineer | 120h |
| 5 | 1.4 | Develop use cases | manual | 4d | 2018-09-19 | 2018-09-22 | 3 |  |  | start no earlier than 2018-09-18 |  | Team_3_Discovery_Tool_Calendar | Feasibility Analyst; Life Cycle Planner; Operational Concept Engineer; Project Manager; Prototyper; Software Architect; Requirement Engineer | 224h |
| 6 | 2 | **Valuation Phase I** |  | 3d | 2018-09-21 | 2018-09-23 |  |  |  |  |  | Team_3_Discovery_Tool_Calendar |  | 184h |
| 7 | 2.1 | Win-win session #2: Develop initial concept description |  | 1d | 2018-09-21 | 2018-09-21 | 3 | 0d |  | must finish on 2018-09-21 |  | Team_3_Discovery_Tool_Calendar | Feasibility Analyst; II V&V; Life Cycle Planner; Operational Concept Engineer; Project Manager; Prototyper; Quality Engineer; Requirement Engineer; Software Architect; System Architect; Tester | 88h |
| 8 | 2.2 | Validate crawling based trend identifier |  | 1d | 2018-09-21 | 2018-09-21 | 3 | 74d |  | start no earlier than 2018-09-21 |  | Team_3_Discovery_Tool_Calendar | Prototyper; Software Architect; System Architect | 24h |
| 9 | 2.3 | Validate API based trend identifier |  | 3d | 2018-09-21 | 2018-09-23 | 3 | 72d |  | start no earlier than 2018-09-21 |  | Team_3_Discovery_Tool_Calendar | Prototyper; Software Architect; System Architect | 72h |
| 10 | 3 | **Foundations Phase I** |  | 5d | 2018-09-24 | 2018-09-28 |  |  |  |  |  | Team_3_Discovery_Tool_Calendar |  | 504h |
| 11 | 3.1 | Design preliminary system |  | 2d | 2018-09-24 | 2018-09-25 | 3, 7, 5 | 69d | 2d |  |  | Team_3_Discovery_Tool_Calendar | System Architect; Software Architect | 32h |
| 12 | 3.2 | Investigate Facebook API for API based trend crawler prototyping | manual | 4d | 2018-09-24 | 2018-09-27 | 3, 7, 5 |  |  | start no earlier than 2018-09-24 | 2018-09-28 | Team_3_Discovery_Tool_Calendar | Prototyper | 32h |
| 13 | 3.3 | Investigate Twitter API, build feed crawler prototype |  | 4d | 2018-09-24 | 2018-09-27 | 3, 7, 5 | 67d | 0d | start no earlier than 2018-09-24 |  | Team_3_Discovery_Tool_Calendar | Prototyper | 32h |
| 14 | 3.4 | Prototype Google Trends feed crawler |  | 4d | 2018-09-24 | 2018-09-27 | 3, 7, 5 | 67d | 0d |  |  | Team_3_Discovery_Tool_Calendar | Prototyper | 32h |
| 15 | 3.5 | Prototype competitor performance analysis with ShareCount API |  | 4d | 2018-09-24 | 2018-09-27 | 3, 7, 5 | 67d | 0d | start no earlier than 2018-09-24 |  | Team_3_Discovery_Tool_Calendar | Prototyper | 32h |
| 16 | 3.6 | Prototype frontend UI in Sketch, Invision, and Balsamiq |  | 4d | 2018-09-24 | 2018-09-27 | 3, 7, 5 | 67d | 0d | start no earlier than 2018-09-24 |  | Team_3_Discovery_Tool_Calendar | Prototyper | 32h |
| 17 | 3.7 | Implement presentation slide deck |  | 4d | 2018-09-24 | 2018-09-27 | 3, 7, 5 | 67d | 0d |  |  | Team_3_Discovery_Tool_Calendar | Project Manager; Prototyper | 64h |
| 18 | 3.8 | Update risk and risk mitigation plan |  | 4d | 2018-09-24 | 2018-09-27 |  | 67d | 0d | start no earlier than 2018-09-24 |  | Team_3_Discovery_Tool_Calendar | Feasibility Analyst; Life Cycle Planner; Operational Concept Engineer; Project Manager | 128h |
| 19 | 3.9 | Make initial drafts for project documentation |  | 4d | 2018-09-24 | 2018-09-27 | 3, 7, 5 | 68d |  |  |  | Team_3_Discovery_Tool_Calendar | Requirement Engineer | 32h |
| 20 | 3.10 | Conduct prototype presentation | milestone | 1d | 2018-09-28 | 2018-09-28 | 11, 12, 13, 14, 15, 16, 17, 18 | 67d |  | start no earlier than 2018-09-28 |  | Team_3_Discovery_Tool_Calendar | Feasibility Analyst; II V&V; Life Cycle Planner; Operational Concept Engineer; Project Manager; Prototyper; Quality Engineer; Requirement Engineer; Software Architect; System Architect; Tester | 88h |
| 21 | 4 | **Weekly Jira Individual Survey Submission** |  | 79d | 2018-09-17 | 2018-12-04 |  |  |  |  |  | Team_3_Discovery_Tool_Calendar | Feasibility Analyst; II V&V; Life Cycle Planner; Operational Concept Engineer; Project Manager; Prototyper; Quality Engineer; Requirement Engineer; Software Architect; System Architect; Tester | 6952h |
| 22 | 4.1 | Weekly Jira Individual Survey Submission 1 |  | 1d | 2018-09-17 | 2018-09-17 |  | 78d |  | start no earlier than 2018-09-17 |  | Team_3_Discovery_Tool_Calendar |  |  |
| 23 | 4.2 | Weekly Jira Individual Survey Submission 2 |  | 1d | 2018-09-24 | 2018-09-24 |  | 71d |  | start no earlier than 2018-09-24 |  | Team_3_Discovery_Tool_Calendar |  |  |
| 24 | 4.3 | Weekly Jira Individual Survey Submission 3 |  | 1d | 2018-10-01 | 2018-10-01 |  | 64d |  | start no earlier than 2018-10-01 |  | Team_3_Discovery_Tool_Calendar |  |  |
| 25 | 4.4 | Weekly Jira Individual Survey Submission 4 |  | 1d | 2018-10-08 | 2018-10-08 |  | 57d |  | start no earlier than 2018-10-08 |  | Team_3_Discovery_Tool_Calendar |  |  |
| 26 | 4.5 | Weekly Jira Individual Survey Submission 5 |  | 1d | 2018-10-15 | 2018-10-15 |  | 50d |  | start no earlier than 2018-10-15 |  | Team_3_Discovery_Tool_Calendar |  |  |
| 27 | 4.6 | Weekly Jira Individual Survey Submission 6 |  | 1d | 2018-10-22 | 2018-10-22 |  | 43d |  | start no earlier than 2018-10-22 |  | Team_3_Discovery_Tool_Calendar |  |  |
| 28 | 4.7 | Weekly Jira Individual Survey Submission 7 |  | 1d | 2018-10-29 | 2018-10-29 |  | 36d |  | start no earlier than 2018-10-29 |  | Team_3_Discovery_Tool_Calendar |  |  |
| 29 | 4.8 | Weekly Jira Individual Survey Submission 8 |  | 1d | 2018-11-05 | 2018-11-05 |  | 29d |  | start no earlier than 2018-11-05 |  | Team_3_Discovery_Tool_Calendar |  |  |
| 30 | 4.9 | Weekly Jira Individual Survey Submission 9 |  | 1d | 2018-11-12 | 2018-11-12 |  | 22d |  | start no earlier than 2018-11-12 |  | Team_3_Discovery_Tool_Calendar |  |  |
| 31 | 4.10 | Weekly Jira Individual Survey Submission 10 |  | 1d | 2018-11-19 | 2018-11-19 |  | 15d |  | start no earlier than 2018-11-19 |  | Team_3_Discovery_Tool_Calendar |  |  |
| 32 | 4.11 | Weekly Jira Individual Survey Submission 11 |  | 1d | 2018-11-26 | 2018-11-26 |  | 8d |  | start no earlier than 2018-11-26 |  | Team_3_Discovery_Tool_Calendar |  |  |
| 33 | 4.12 | Weekly Jira Individual Survey Submission 12 |  | 1d | 2018-12-03 | 2018-12-03 |  | 1d |  | start no earlier than 2018-12-03 |  | Team_3_Discovery_Tool_Calendar |  |  |

| ID | WBS | Task | Duration | Start | Finish | Predecessors | Total slack | Free slack | Constraint | Calendar | Resources | Work |
| --- | --- | --- | --- | --- | --- | --- | --- | --- | --- | --- | --- | --- |
| 34 | 5 | **Weekly Team Meeting** | 78d | 2018-09-18 | 2018-12-04 |  |  |  |  | Team_3_Discovery_Tool_Calendar | Feasibility Analyst; II V&V; Life Cycle Planner; Operational Concept Engineer; Project Manager; Prototyper; Quality Engineer; Requirement Engineer; Software Architect; System Architect; Tester | 6864h |
| 35 | 5.1 | Weekly Team Meeting 1 | 1d | 2018-09-18 | 2018-09-18 |  | 77d |  | start no earlier than 2018-09-18 | Team_3_Discovery_Tool_Calendar |  |  |
| 36 | 5.2 | Weekly Team Meeting 2 | 1d | 2018-09-25 | 2018-09-25 |  | 70d |  | start no earlier than 2018-09-25 | Team_3_Discovery_Tool_Calendar |  |  |
| 37 | 5.3 | Weekly Team Meeting 3 | 1d | 2018-10-02 | 2018-10-02 |  | 63d |  | start no earlier than 2018-10-02 | Team_3_Discovery_Tool_Calendar |  |  |
| 38 | 5.4 | Weekly Team Meeting 4 | 1d | 2018-10-09 | 2018-10-09 |  | 56d |  | start no earlier than 2018-10-09 | Team_3_Discovery_Tool_Calendar |  |  |
| 39 | 5.5 | Weekly Team Meeting 5 | 1d | 2018-10-16 | 2018-10-16 |  | 49d |  | start no earlier than 2018-10-16 | Team_3_Discovery_Tool_Calendar |  |  |
| 40 | 5.6 | Weekly Team Meeting 6 | 1d | 2018-10-23 | 2018-10-23 |  | 42d |  | start no earlier than 2018-10-23 | Team_3_Discovery_Tool_Calendar |  |  |
| 41 | 5.7 | Weekly Team Meeting 7 | 1d | 2018-10-30 | 2018-10-30 |  | 35d |  | start no earlier than 2018-10-30 | Team_3_Discovery_Tool_Calendar |  |  |
| 42 | 5.8 | Weekly Team Meeting 8 | 1d | 2018-11-06 | 2018-11-06 |  | 28d |  | start no earlier than 2018-11-06 | Team_3_Discovery_Tool_Calendar |  |  |
| 43 | 5.9 | Weekly Team Meeting 9 | 1d | 2018-11-13 | 2018-11-13 |  | 21d |  | start no earlier than 2018-11-13 | Team_3_Discovery_Tool_Calendar |  |  |
| 44 | 5.10 | Weekly Team Meeting 10 | 1d | 2018-11-20 | 2018-11-20 |  | 14d |  | start no earlier than 2018-11-20 | Team_3_Discovery_Tool_Calendar |  |  |
| 45 | 5.11 | Weekly Team Meeting 11 | 1d | 2018-11-27 | 2018-11-27 |  | 7d |  | start no earlier than 2018-11-27 | Team_3_Discovery_Tool_Calendar |  |  |
| 46 | 5.12 | Weekly Team Meeting 12 | 1d | 2018-12-04 | 2018-12-04 |  | 0d |  | start no earlier than 2018-12-04 | Team_3_Discovery_Tool_Calendar |  |  |
| 47 | 6 | **Bi-weekly Team Progress Report** | 84d | 2018-09-06 | 2018-11-28 |  |  |  |  | Team_3_Discovery_Tool_Calendar | Feasibility Analyst; II V&V; Life Cycle Planner; Operational Concept Engineer; Project Manager; Prototyper; Quality Engineer; Requirement Engineer; Software Architect; System Architect; Tester | 7392h |
| 48 | 6.1 | Bi-weekly Team Progress Report 9/6-9/19 | 14d | 2018-09-06 | 2018-09-19 |  | 6d | 0d | finish no earlier than 2018-09-19 | Team_3_Discovery_Tool_Calendar |  |  |
| 49 | 6.2 | Bi-weekly Team Progress Report 9/20-10/3 | 14d | 2018-09-20 | 2018-10-03 | 48 | 6d | 0d |  | Team_3_Discovery_Tool_Calendar |  |  |
| 50 | 6.3 | Bi-weekly Team Progress Report 10/4-10/17 | 14d | 2018-10-04 | 2018-10-17 | 49 | 6d | 0d |  | Team_3_Discovery_Tool_Calendar |  |  |
| 51 | 6.4 | Bi-weekly Team Progress Report 10/18-10/31 | 14d | 2018-10-18 | 2018-10-31 | 50 | 6d | 0d |  | Team_3_Discovery_Tool_Calendar |  |  |
| 52 | 6.5 | Bi-weekly Team Progress Report 11/1-11/14 | 14d | 2018-11-01 | 2018-11-14 | 51 | 6d | 0d |  | Team_3_Discovery_Tool_Calendar |  |  |
| 53 | 6.6 | Bi-weekly Team Progress Report 11/15-11/28 | 14d | 2018-11-15 | 2018-11-28 | 52 | 6d |  |  | Team_3_Discovery_Tool_Calendar |  |  |
| 54 | 7 | **Bi-weekly Team Risk and Defects Report** | 84d | 2018-09-06 | 2018-11-28 |  |  |  |  | Team_3_Discovery_Tool_Calendar | Feasibility Analyst; II V&V; Life Cycle Planner; Operational Concept Engineer; Project Manager; Prototyper; Quality Engineer; Requirement Engineer; Software Architect; System Architect; Tester | 7392h |
| 55 | 7.1 | Bi-weekly Team Risk and Defects Report 9/6-9/19 | 14d | 2018-09-06 | 2018-09-19 |  | 6d | 0d | finish no earlier than 2018-09-19 | Team_3_Discovery_Tool_Calendar |  |  |
| 56 | 7.2 | Bi-weekly Team Risk and Defects Report 9/20-10/3 | 14d | 2018-09-20 | 2018-10-03 | 55 | 6d | 0d |  | Team_3_Discovery_Tool_Calendar |  |  |
| 57 | 7.3 | Bi-weekly Team Risk and Defects Report 10/4-10/17 | 14d | 2018-10-04 | 2018-10-17 | 56 | 6d | 0d |  | Team_3_Discovery_Tool_Calendar |  |  |
| 58 | 7.4 | Bi-weekly Team Risk and Defect Report 10/18-10/31 | 14d | 2018-10-18 | 2018-10-31 | 57 | 6d | 0d |  | Team_3_Discovery_Tool_Calendar |  |  |
| 59 | 7.5 | Bi-weekly Team Risk and Defect Report 11/1-11/14 | 14d | 2018-11-01 | 2018-11-14 | 58 | 6d | 0d |  | Team_3_Discovery_Tool_Calendar |  |  |
| 60 | 7.6 | Bi-weekly Team Risk and Defect Report 11/15-11/28 | 14d | 2018-11-15 | 2018-11-28 | 59 | 6d |  |  | Team_3_Discovery_Tool_Calendar |  |  |

| ID | WBS | Task | Type | Duration | Start | Finish | Predecessors | Total slack | Free slack | Constraint | Deadline | Calendar | Resources | Work |
| --- | --- | --- | --- | --- | --- | --- | --- | --- | --- | --- | --- | --- | --- | --- |
| 61 | 8 | **Bi-weekly Project Plan Update** |  | 84d | 2018-09-06 | 2018-11-28 |  |  |  |  |  | Team_3_Discovery_Tool_Calendar | Project Manager | 672h |
| 62 | 8.1 | Bi-weekly Project Plan Update 9/6-9/19 |  | 14d | 2018-09-06 | 2018-09-19 |  | 6d | 0d | finish no earlier than 2018-09-19 |  | Team_3_Discovery_Tool_Calendar |  |  |
| 63 | 8.2 | Bi-weekly Project Plan Update 9/20-10/3 |  | 14d | 2018-09-20 | 2018-10-03 | 62 | 6d | 0d |  |  | Team_3_Discovery_Tool_Calendar |  |  |
| 64 | 8.3 | Bi-weekly Project Plan Update 10/4-10/17 |  | 14d | 2018-10-04 | 2018-10-17 | 63 | 6d | 0d |  |  | Team_3_Discovery_Tool_Calendar |  |  |
| 65 | 8.4 | Bi-weekly Project Plan Update 10/18-10/31 |  | 14d | 2018-10-18 | 2018-10-31 | 64 | 6d | 0d |  |  | Team_3_Discovery_Tool_Calendar |  |  |
| 66 | 8.5 | Bi-weekly Project Plan Update 11/1-11/14 |  | 14d | 2018-11-01 | 2018-11-14 | 65 | 6d | 0d |  |  | Team_3_Discovery_Tool_Calendar |  |  |
| 67 | 8.6 | Bi-weekly Project Plan Update 11/15-11/28 |  | 14d | 2018-11-15 | 2018-11-28 | 66 | 6d |  |  |  | Team_3_Discovery_Tool_Calendar |  |  |
| 68 | 9 | **Bi-weekly Team Technical Debt Report** |  | 56d | 2018-10-06 | 2018-11-30 |  |  |  |  |  | Team_3_Discovery_Tool_Calendar | Feasibility Analyst; II V&V; Life Cycle Planner; Operational Concept Engineer; Project Manager; Prototyper; Quality Engineer; Requirement Engineer; Software Architect; System Architect; Tester | 4928h |
| 69 | 9.1 | Bi-weekly Team Technical Debt Report 1 |  | 14d | 2018-10-06 | 2018-10-19 |  | 4d | 0d | start no earlier than 2018-10-06 |  | Team_3_Discovery_Tool_Calendar |  |  |
| 70 | 9.2 | Bi-weekly Team Technical Debt Report 2 |  | 14d | 2018-10-20 | 2018-11-02 | 69 | 4d | 0d |  |  | Team_3_Discovery_Tool_Calendar |  |  |
| 71 | 9.3 | Bi-weekly Team Technical Debt Report 3 |  | 14d | 2018-11-03 | 2018-11-16 | 70 | 4d | 0d |  |  | Team_3_Discovery_Tool_Calendar |  |  |
| 72 | 9.4 | Bi-weekly Team Technical Debt Report 4 |  | 14d | 2018-11-17 | 2018-11-30 | 71 | 4d |  |  |  | Team_3_Discovery_Tool_Calendar |  |  |
| 73 | 10 | **Exploration Phase II** |  | 16d | 2018-10-02 | 2018-10-17 |  |  |  |  |  | Team_3_Discovery_Tool_Calendar |  | 416h |
| 74 | 10.1 | Modify WinBook based on new scope requirements and client needs | manual | 10d | 2018-10-02 | 2018-10-11 |  |  |  | start no earlier than 2018-10-02 |  | Team_3_Discovery_Tool_Calendar | Project Manager | 80h |
| 75 | 10.2 | Refine and build new use cases based on client's feedback and needs | manual | 10d | 2018-10-02 | 2018-10-11 |  |  |  | finish no earlier than 2018-10-05 |  | Team_3_Discovery_Tool_Calendar | Operational Concept Engineer; Project Manager | 160h |
| 76 | 10.3 | Conduct use case based effort estimation as a team | manual | 1d | 2018-10-12 | 2018-10-12 | 75 |  |  | start no earlier than 2018-10-12 |  | Team_3_Discovery_Tool_Calendar | Feasibility Analyst; II V&V; Life Cycle Planner; Operational Concept Engineer; Project Manager; Prototyper; Quality Engineer; Requirement Engineer; Software Architect; System Architect; Tester | 88h |
| 77 | 10.4 | Investigate methods to access historical data from data sources | manual | 3d | 2018-10-08 | 2018-10-10 |  |  |  | start no earlier than 2018-10-06 |  | Team_3_Discovery_Tool_Calendar | Feasibility Analyst; Prototyper; Software Architect | 72h |
| 78 | 10.5 | Design system and software architecture | manual | 1d | 2018-10-13 | 2018-10-13 | 74, 75, 76 |  |  | start no earlier than 2018-10-13 |  | Team_3_Discovery_Tool_Calendar | Software Architect; System Architect | 16h |
| 79 | 11 | **Valuation Phase II** |  | 13d | 2018-10-10 | 2018-10-22 |  |  |  |  |  | Team_3_Discovery_Tool_Calendar |  | 256h |
| 80 | 11.1 | Develop frontend UI prototype iteration II based on new scope | manual | 5d | 2018-10-12 | 2018-10-16 |  |  |  |  | 2018-10-16 | Team_3_Discovery_Tool_Calendar | Prototyper | 40h |
| 81 | 11.2 | Develop backend data endpoint prototype based on new scope | manual | 5d | 2018-10-12 | 2018-10-16 |  |  |  |  | 2018-10-16 | Team_3_Discovery_Tool_Calendar | Prototyper | 40h |
| 82 | 11.3 | **Develop DC Package** |  | 13d | 2018-10-10 | 2018-10-22 |  |  |  |  |  | Team_3_Discovery_Tool_Calendar |  | 176h |
| 83 | 11.3.1 | Develop operational concept | manual | 3d? | 2018-10-13 | 2018-10-15 |  |  |  | start no earlier than 2018-10-13 |  | Team_3_Discovery_Tool_Calendar | Operational Concept Engineer | 24h |
| 84 | 11.3.2 | Develop requirement specification | manual | 3d | 2018-10-13 | 2018-10-15 |  |  |  | start no earlier than 2018-10-13 |  | Team_3_Discovery_Tool_Calendar | Requirement Engineer | 24h |
| 85 | 11.3.3 | Elaborate development life cycle | manual | 8d | 2018-10-13 | 2018-10-20 |  |  |  | start no earlier than 2018-10-13 |  | Team_3_Discovery_Tool_Calendar | Life Cycle Planner | 64h |
| 86 | 11.3.4 | Prepare feasibility evidence | manual | 8d | 2018-10-13 | 2018-10-20 |  |  |  | start no earlier than 2018-10-13 |  | Team_3_Discovery_Tool_Calendar | Feasibility Analyst | 64h |

| ID | WBS | Task | Type | Duration | Start | Finish | Predecessors | Total slack | Constraint | Deadline | Calendar | Resources | Work |
| --- | --- | --- | --- | --- | --- | --- | --- | --- | --- | --- | --- | --- | --- |
| 87 | 12 | **Foundations Phase II** |  | 13d | 2018-10-10 | 2018-10-22 |  |  |  |  | Team_3_Discovery_Tool_Calendar |  | 944h |
| 88 | 12.1 | **Implement ABR deliverables** |  | 5d | 2018-10-13 | 2018-10-17 |  |  |  | 2018-10-17 | Team_3_Discovery_Tool_Calendar | Feasibility Analyst; II V&V; Life Cycle Planner; Operational Concept Engineer; Project Manager; Quality Engineer; Requirement Engineer; Software Architect; System Architect | 464h |
| 89 | 12.1.1 | Integrate docs into slide deck |  | 2d? | 2018-10-15 | 2018-10-16 |  | 0d | finish no earlier than 2018-10-16 |  | Team_3_Discovery_Tool_Calendar | Project Manager | 16h |
| 90 | 12.1.2 | Dry run ARB presentation |  | 1d? | 2018-10-17 | 2018-10-17 | 89 | 0d |  |  | Team_3_Discovery_Tool_Calendar | Feasibility Analyst; II V&V; Life Cycle Planner; Operational Concept Engineer; Project Manager; Prototyper; Quality Engineer; Requirement Engineer; Software Architect; System Architect; Tester | 88h |
| 91 | 12.2 | **Develop DC Package (Continue)** |  | 13d | 2018-10-10 | 2018-10-22 |  |  |  |  | Team_3_Discovery_Tool_Calendar |  | 480h |
| 92 | 12.2.1 | Prepare for test plan | manual | 10d | 2018-10-13 | 2018-10-22 |  |  | start no earlier than 2018-10-13 |  | Team_3_Discovery_Tool_Calendar | Requirement Engineer; Tester | 160h |
| 93 | 12.2.2 | Plan quality management | manual | 10d | 2018-10-13 | 2018-10-22 |  |  | start no earlier than 2018-10-13 |  | Team_3_Discovery_Tool_Calendar | Quality Engineer | 80h |
| 94 | 12.2.3 | Elaborate verification and validation process | manual | 10d | 2018-10-13 | 2018-10-22 |  |  |  |  | Team_3_Discovery_Tool_Calendar | Tester; Quality Engineer; Requirement Engineer | 240h |
| 95 | 13 | **Development Phase** |  | 29d | 2018-10-23 | 2018-11-30 |  |  |  |  |  |  | 3776h |
| 96 | 13.1 | Client meeting |  | 1d | 2018-10-31 | 2018-10-31 |  | 24d | start no earlier than 2018-10-31 |  |  | Feasibility Analyst; II V&V; Life Cycle Planner; Operational Concept Engineer; Project Manager; Prototyper; Quality Engineer; Requirement Engineer; Software Architect; System Architect; Tester | 88h |
| 97 | 13.2 | 577A Project Presentation |  | 1d | 2018-11-05 | 2018-11-05 |  | 29d | start no earlier than 2018-11-05 |  | Team_3_Discovery_Tool_Calendar | Feasibility Analyst; II V&V; Life Cycle Planner; Operational Concept Engineer; Project Manager; Prototyper; Quality Engineer; Requirement Engineer; Software Architect; System Architect; Tester | 88h |
| 98 | 13.3 | Conduct code revise with Crucible |  | 1d | 2018-11-05 | 2018-11-05 |  | 29d | start no earlier than 2018-11-05 |  | Team_3_Discovery_Tool_Calendar | Feasibility Analyst; II V&V; Life Cycle Planner; Operational Concept Engineer; Project Manager; Prototyper; Quality Engineer; Requirement Engineer; Software Architect; System Architect; Tester | 88h |
| 99 | 13.4 | Update use cases |  | 2d | 2018-11-08 | 2018-11-09 |  | 25d | start no earlier than 2018-11-08 |  | Team_3_Discovery_Tool_Calendar | II V&V; Project Manager | 32h |
| 100 | 13.5 | Update program model |  | 2d | 2018-11-08 | 2018-11-09 |  | 25d | start no earlier than 2018-11-08 |  | Team_3_Discovery_Tool_Calendar | II V&V; Project Manager | 32h |
| 101 | 13.6 | Core Capability Demonstration |  | 1d | 2018-11-19 | 2018-11-19 |  | 15d | start no earlier than 2018-11-19 |  | Team_3_Discovery_Tool_Calendar | Feasibility Analyst; II V&V; Life Cycle Planner; Operational Concept Engineer; Project Manager; Prototyper; Quality Engineer; Requirement Engineer; Software Architect; System Architect; Tester | 88h |
| 102 | 13.7 | Update FED |  | 7d | 2018-11-19 | 2018-11-25 |  | 9d | finish no earlier than 2018-11-25 |  | Team_3_Discovery_Tool_Calendar | II V&V; Project Manager | 112h |
| 103 | 13.8 | Update LCP |  | 7d | 2018-11-19 | 2018-11-25 |  | 9d | finish no earlier than 2018-11-25 |  | Team_3_Discovery_Tool_Calendar | II V&V; Project Manager | 112h |
| 104 | 13.9 | Update TPC |  | 7d | 2018-11-19 | 2018-11-25 |  | 9d | finish no earlier than 2018-11-25 |  | Team_3_Discovery_Tool_Calendar | II V&V; Project Manager | 112h |
| 105 | 13.10 | Update SSAD |  | 7d | 2018-11-19 | 2018-11-25 |  | 9d | finish no earlier than 2018-11-25 |  | Team_3_Discovery_Tool_Calendar | II V&V; Project Manager | 112h |
| 106 | 13.11 | Update OCD |  | 7d | 2018-11-19 | 2018-11-25 |  | 9d | finish no earlier than 2018-11-25 |  | Team_3_Discovery_Tool_Calendar | II V&V; Project Manager | 112h |
| 107 | 13.12 | Implement user manual |  | 7d | 2018-11-19 | 2018-11-25 |  | 9d | start no earlier than 2018-11-19 |  | Team_3_Discovery_Tool_Calendar | II V&V; Project Manager; Prototyper; Quality Engineer; Requirement Engineer | 280h |
| 108 | 13.13 | TRR presentation |  | 1d | 2018-11-26 | 2018-11-26 |  | 8d | start no earlier than 2018-11-26 |  | Team_3_Discovery_Tool_Calendar | Feasibility Analyst; II V&V; Life Cycle Planner; Operational Concept Engineer; Project Manager; Prototyper; Quality Engineer; Requirement Engineer; Software Architect; System Architect; Tester | 88h |
| 109 | 13.14 | **Coding Tasks** |  | 18d | 2018-11-08 | 2018-11-25 |  |  |  |  | Team_3_Discovery_Tool_Calendar |  | 2432h |
| 110 | 13.14.1 | Update UI |  | 9d | 2018-11-17 | 2018-11-25 |  | 9d | finish no earlier than 2018-11-25 |  | Team_3_Discovery_Tool_Calendar | Prototyper; Software Architect | 144h |
| 111 | 13.14.2 | Implement logout flow/token refresh |  | 11d | 2018-11-08 | 2018-11-18 |  | 16d | start no earlier than 2018-11-08 |  | Team_3_Discovery_Tool_Calendar | Prototyper | 88h |
| 112 | 13.14.3 | Protect routes according to access privileges for new user roles |  | 11d | 2018-11-08 | 2018-11-18 |  | 16d | start no earlier than 2018-11-08 |  | Team_3_Discovery_Tool_Calendar | Prototyper | 88h |
| 113 | 13.14.4 | Refactor PUT route for ideas endpoint |  | 11d | 2018-11-08 | 2018-11-18 |  | 16d | start no earlier than 2018-11-08 |  | Team_3_Discovery_Tool_Calendar | Prototyper | 88h |
| 114 | 13.14.5 | Debug Heroku deployment |  | 11d | 2018-11-08 | 2018-11-18 |  | 16d | start no earlier than 2018-11-08 |  | Team_3_Discovery_Tool_Calendar | Prototyper | 88h |
| 115 | 13.14.6 | Deploy app to AWS |  | 11d | 2018-11-08 | 2018-11-18 |  | 16d | start no earlier than 2018-11-08 |  | Team_3_Discovery_Tool_Calendar | Prototyper | 88h |
| 116 | 13.14.7 | Refactor config file for production |  | 11d | 2018-11-08 | 2018-11-18 |  | 16d | start no earlier than 2018-11-08 |  | Team_3_Discovery_Tool_Calendar | Prototyper | 88h |
| 117 | 13.14.8 | Document API via swagger fields |  | 11d | 2018-11-08 | 2018-11-18 |  | 16d | start no earlier than 2018-11-08 |  | Team_3_Discovery_Tool_Calendar | Prototyper | 88h |
| 118 | 13.14.9 | Refactor user model to account for new user role types |  | 5d | 2018-11-10 | 2018-11-14 |  | 20d | start no earlier than 2018-11-10 |  | Team_3_Discovery_Tool_Calendar | Prototyper | 40h |
| 119 | 13.14.10 | Refactor auth decorators to account for new user role types |  | 5d | 2018-11-10 | 2018-11-14 |  | 20d | start no earlier than 2018-11-10 |  | Team_3_Discovery_Tool_Calendar | Prototyper | 40h |
| 120 | 13.14.11 | Create goal model |  | 5d | 2018-11-10 | 2018-11-14 |  | 20d | finish no earlier than 2018-11-14 |  | Team_3_Discovery_Tool_Calendar | Prototyper; Software Architect | 80h |
| 121 | 13.14.12 | Create GET/POST routes for goal list |  | 5d | 2018-11-10 | 2018-11-14 |  | 20d | finish no earlier than 2018-11-14 |  | Team_3_Discovery_Tool_Calendar | Prototyper | 40h |
| 122 | 13.14.13 | Create GET/POST/PUT/DELETE routes for goals route |  | 5d | 2018-11-10 | 2018-11-14 |  | 20d | finish no earlier than 2018-11-14 |  | Team_3_Discovery_Tool_Calendar | Prototyper | 40h |
| 123 | 13.14.14 | Export publishing calendar to CSV file |  | 11d | 2018-11-15 | 2018-11-25 |  | 9d | finish no earlier than 2018-11-25 |  | Team_3_Discovery_Tool_Calendar | Prototyper | 88h |
| 124 | 13.14.15 | Integrate frontend UI with backend API |  | 11d | 2018-11-15 | 2018-11-25 |  | 9d | finish no earlier than 2018-11-25 |  | Team_3_Discovery_Tool_Calendar | Prototyper; Software Architect; System Architect | 264h |
| 125 | 13.14.16 | Test auth endpoints |  | 9d | 2018-11-17 | 2018-11-25 |  | 9d | start no earlier than 2018-11-17 |  | Team_3_Discovery_Tool_Calendar | Prototyper; Tester; II V&V | 216h |
| 126 | 13.14.17 | Test users endpoints |  | 9d | 2018-11-17 | 2018-11-25 |  | 9d | start no earlier than 2018-11-17 |  | Team_3_Discovery_Tool_Calendar | Prototyper; Tester; II V&V | 216h |
| 127 | 13.14.18 | Test ideas endpoints |  | 9d | 2018-11-17 | 2018-11-25 |  | 9d | start no earlier than 2018-11-17 |  | Team_3_Discovery_Tool_Calendar | Prototyper; Tester; II V&V | 216h |
| 128 | 13.14.19 | Test goals endpoints |  | 9d | 2018-11-17 | 2018-11-25 |  | 9d | start no earlier than 2018-11-17 |  | Team_3_Discovery_Tool_Calendar | Prototyper; Tester; II V&V | 216h |
| 129 | 13.14.20 | Test utilities |  | 9d | 2018-11-17 | 2018-11-25 |  | 9d | start no earlier than 2018-11-17 |  | Team_3_Discovery_Tool_Calendar | Prototyper; Tester; II V&V | 216h |
